# Prometeusz

Schedule from MS Project, 2019-01-02 to 2019-05-15, costs in zł, A marks actual dates.

## Calendars

- Standardowy: Mon-Fri 09:00-13:00, 14:00-18:00; Sat-Sun off.

## Resources

| Resource | Rate | Notes |
| --- | --- | --- |
| Dyrektor segmentu - Andrzej | 100 | Ma możliwość wyrażana zgody na koszty oraz podpisywania umów |
| Starszy specjalista sieci - Mateusz | 50 |  |
| Starszy administrator sieci - Adam | 50 |  |
| Starszy specjalista ds.. Aplikacji i oprogramowania - Roman | 50 |  |
| Dyrektor operacyjny - Michalina | 120 |  |
| Przedstawiciel użytkowników - Janusz | 30 |  |
| Specjalista ds.. Rozwoju i szkoleń - Anna | 35 |  |
| Trener/ Specjalista ds.. Zarządzania zmianą - Zofia | 80 |  |
| Pracownik działu wsparcia IT - Łukasz | 35 |  |
| Pracownik działu wsparcia IT - Barbara | 35 |  |
| Pracownik działu wsparcia IT - Krzysztof | 35 |  |
| Serwer |  |  |
| Oprogramowanie serwera |  |  |
| Aplikacje użytkowe |  |  |
| Pracownik administracyjny - Tomasz | 30 |  |

## Schedule

| ID | WBS | Task | Type | Duration | Start | Finish | Predecessors | Complete | Remaining | Total slack | Constraint | Resources | Work | Actual work | Cost | Actual cost |
| --- | --- | --- | --- | --- | --- | --- | --- | --- | --- | --- | --- | --- | --- | --- | --- | --- |
| 1 | 1 | **Wybór sprzętu oraz oprogramowania** |  | 8d | 2019-01-02 A | 2019-01-11 A |  | 100% |  |  |  |  | 14h | 14h | 927.2 | 927.2 |
| 2 | 1.1 | Zdefiniowanie wymagań sprzętowych |  | 1d | 2019-01-02 A | 2019-01-02 A |  | 100% |  |  | start no earlier than 2019-01-02 | Dyrektor operacyjny - Michalina [25%]; Dyrektor segmentu - Andrzej [25%]; Przedstawiciel użytkowników - Janusz [25%]; Starszy administrator sieci - Adam [25%]; Starszy specjalista ds.. Aplikacji i oprogramowania - Roman [25%]; Starszy specjalista sieci - Mateusz [25%] | 12h | 12h | 800 | 800 |
| 3 | 1.2 | Wysłanie komunikacji ustaleń | manual | 1d | 2019-01-03 A | 2019-01-03 A | 2 | 100% |  |  |  | Pracownik administracyjny - Tomasz [13%] | 1.04h | 1.04h | 31.2 | 31.2 |
| 4 | 1.3 | Otrzymanie zgody | manual | 6d | 2019-01-04 A | 2019-01-11 A | 3 | 100% |  |  |  | Dyrektor segmentu - Andrzej [2%] | 0.96h | 0.96h | 96 | 96 |
| 5 | 2 | **Przeprowadzenie zakupu** |  | 25d | 2019-01-14 A | 2019-02-18 |  | 20% | 20.05d | 0d |  |  | 16.24h | 3.26h | 66,625.6 | 97.92 |
| 6 | 2.1 | **Ustalenie oferty rynkowej** |  | 15d | 2019-01-14 A | 2019-02-01 |  | 33% | 10.05d | 0d |  |  | 13.68h | 3.26h | 472.8 | 97.92 |
| 7 | 2.1.1 | Wysłanie zapytań do przedstawicieli firm w celu ustalenia oferty | manual | 1d | 2019-01-14 A | 2019-01-14 A | 4 | 100% |  |  |  | Pracownik administracyjny - Tomasz [25%] | 2h | 2h | 60 | 60 |
| 8 | 2.1.2 | Zebranie ofert | manual | 11d | 2019-01-15 A | 2019-01-29 | 7 | 36% | 7.05d |  |  | Pracownik administracyjny - Tomasz [4%] | 3.52h | 1.26h | 105.6 | 37.92 |
| 9 | 2.1.3 | Przeprowadzenie porównania | manual | 2d | 2019-01-30 | 2019-01-31 | 8 |  |  |  |  | Pracownik administracyjny - Tomasz [25%] | 4h |  | 120 |  |
| 10 | 2.1.4 | Wybór oferty | manual | 1d | 2019-02-01 | 2019-02-01 | 9 |  |  |  |  | Pracownik administracyjny - Tomasz [13%]; Starszy administrator sieci - Adam [13%]; Starszy specjalista ds.. Aplikacji i oprogramowania - Roman [13%]; Starszy specjalista sieci - Mateusz [13%] | 4.16h |  | 187.2 |  |
| 11 | 2.2 | Otrzymanie zgody na koszt | manual | 6d | 2019-02-04 | 2019-02-11 | 10 |  |  |  |  | Dyrektor segmentu - Andrzej [2%]; Pracownik administracyjny - Tomasz [2%] | 1.92h |  | 124.8 |  |
| 12 | 2.3 | Podpisanie umowy | manual | 4d | 2019-02-12 | 2019-02-15 | 11 |  |  |  |  | Dyrektor segmentu - Andrzej [2%] | 0.64h |  | 64 |  |
| 13 | 2.4 | Zakup sprzętu | milestone, manual | 0d | 2019-02-18 | 2019-02-18 | 12 |  |  |  |  | Aplikacje użytkowe; Oprogramowanie serwera; Serwer |  |  | 65,964 |  |
| 14 | 3 | **Organizacja dowozu i instalacji sprzętu** |  | 26d | 2019-02-15 | 2019-03-22 |  |  |  |  |  |  | 284.32h |  | 9,940.8 |  |
| 15 | 3.1 | Ustalenie daty dowozu sprzętu | manual | 2d | 2019-02-18 | 2019-02-19 | 13 |  |  |  |  | Pracownik administracyjny - Tomasz [13%]; Pracownik działu wsparcia IT - Barbara [13%]; Pracownik działu wsparcia IT - Krzysztof [13%]; Pracownik działu wsparcia IT - Łukasz [13%] | 8.32h |  | 280.8 |  |
| 16 | 3.2 | Sprawdzenie wymagań technicznych pomieszczenia | manual | 1d | 2019-02-18 | 2019-02-18 |  |  |  |  |  | Pracownik działu wsparcia IT - Barbara [50%]; Pracownik działu wsparcia IT - Krzysztof [50%]; Pracownik działu wsparcia IT - Łukasz [50%] | 12h |  | 420 |  |
| 17 | 3.3 | Odbiór sprzętu | manual | 1d | 2019-03-08 | 2019-03-08 | 16, 15 |  |  |  |  | Pracownik działu wsparcia IT - Barbara; Pracownik działu wsparcia IT - Krzysztof; Pracownik działu wsparcia IT - Łukasz | 24h |  | 840 |  |
| 18 | 3.4 | Podłączenie do sieci firmowej | manual | 3d | 2019-03-11 | 2019-03-13 | 17 |  |  |  |  | Pracownik działu wsparcia IT - Barbara; Pracownik działu wsparcia IT - Krzysztof; Pracownik działu wsparcia IT - Łukasz | 72h |  | 2,520 |  |
| 19 | 3.5 | Instalacja oprogramowania | manual | 2d | 2019-03-14 | 2019-03-15 | 18 |  |  |  |  | Pracownik działu wsparcia IT - Barbara; Pracownik działu wsparcia IT - Krzysztof; Pracownik działu wsparcia IT - Łukasz | 48h |  | 1,680 |  |
| 20 | 3.6 | Przeprowadzenie testów | manual | 5d | 2019-03-18 | 2019-03-22 | 19 |  |  |  |  | Pracownik działu wsparcia IT - Barbara; Pracownik działu wsparcia IT - Krzysztof; Pracownik działu wsparcia IT - Łukasz | 120h |  | 4,200 |  |
| 21 | 4 | **Przeszkolenie pracowników odpowiedzialnych za późniejsze utrzymanie systemu oraz pomoc techniczną** |  | 27d | 2019-01-02 A | 2019-02-07 |  | 43% | 15.36d | 0d |  |  | 229.76h | 31.2h | 8,119.6 | 1,128.22 |
| 22 | 4.1 | Wybranie pracowników | manual | 1d | 2019-01-02 | 2019-01-02 |  |  |  |  |  | Pracownik administracyjny - Tomasz [13%]; Starszy administrator sieci - Adam [13%]; Starszy specjalista ds.. Aplikacji i oprogramowania - Roman [13%]; Starszy specjalista sieci - Mateusz [13%] | 4.16h |  | 187.2 |  |
| 23 | 4.2 | **Organizacja szkoleń dla pracowników** |  | 26d | 2019-01-03 A | 2019-02-07 |  | 46% | 14.04d | 0d |  |  | 225.6h | 31.2h | 7,932.4 | 1,128.22 |
| 24 | 4.2.1 | Zebranie oferty rynkowej | manual | 5d | 2019-01-03 A | 2019-01-09 A |  | 100% |  |  |  | Specjalista ds.. Rozwoju i szkoleń - Anna [20%] | 8h | 8h | 280 | 280 |
| 25 | 4.2.2 | Zapisanie pracowników | manual | 1d | 2019-01-14 A | 2019-01-15 A | 24 | 100% |  |  |  | Dyrektor segmentu - Andrzej [7%]; Specjalista ds.. Rozwoju i szkoleń - Anna [13%] | 1.6h | 1.6h | 92.4 | 92.4 |
| 26 | 4.2.3 | Udział pracowników w szkoleniach | manual | 9d | 2019-01-28 A | 2019-02-07 | 25, 22 | 10% | 8.1d |  |  | Pracownik działu wsparcia IT - Barbara; Pracownik działu wsparcia IT - Krzysztof; Pracownik działu wsparcia IT - Łukasz | 216h | 21.59h | 7,560 | 755.83 |

Notes:
- 2: Dwógodzinne spotkanie

| ID | WBS | Task | Type | Duration | Start | Finish | Predecessors | Total slack | Resources | Work | Cost |
| --- | --- | --- | --- | --- | --- | --- | --- | --- | --- | --- | --- |
| 27 | 5 | **Przygotowanie trenera odpowiedzialnego za dalsze wdrożenia pracowników** |  | 35d | 2019-01-28 | 2019-03-15 |  |  |  | 70.08h | 3,782 |
| 28 | 5.1 | Wybór pracownika na stanowisko trenera | manual | 2d | 2019-02-04 | 2019-02-05 |  |  | Pracownik administracyjny - Tomasz [7%]; Starszy administrator sieci - Adam [7%]; Starszy specjalista ds.. Aplikacji i oprogramowania - Roman [7%]; Starszy specjalista sieci - Mateusz [7%] | 4.48h | 369.6 |
| 29 | 5.2 | **Organizacja szkolenia dla trenera** |  | 38d | 2019-01-23 | 2019-03-15 |  | 0d |  | 65.6h | 3,412.4 |
| 30 | 5.2.1 | Zebranie oferty rynkowej | manual | 5d | 2019-01-23 | 2019-01-29 |  |  | Specjalista ds.. Rozwoju i szkoleń - Anna | 40h | 1,400 |
| 31 | 5.2.2 | Zapisanie pracownika | manual | 1d | 2019-02-20 | 2019-02-20 | 30, 28 |  | Specjalista ds.. Rozwoju i szkoleń - Anna [13%]; Dyrektor segmentu - Andrzej [7%] | 1.6h | 92.4 |
| 32 | 5.2.3 | Udział pracownika w szkoleniu | manual | 3d | 2019-03-13 | 2019-03-15 | 31 |  | Trener/ Specjalista ds.. Zarządzania zmianą - Zofia | 24h | 1,920 |
| 33 | 6 | **Konfiguracja sprzętu – serwer** |  | 14d | 2019-03-25 | 2019-04-12 |  | 0d |  | 336h | 11,760 |
| 34 | 6.1 | Konfiguracja dostępów | manual | 5d | 2019-03-25 | 2019-03-29 | 20, 26 |  | Pracownik działu wsparcia IT - Krzysztof | 40h | 1,400 |
| 35 | 6.2 | Podzielenie zasobów sprzętowych | manual | 5d | 2019-03-25 | 2019-03-29 |  |  | Pracownik działu wsparcia IT - Barbara; Pracownik działu wsparcia IT - Łukasz | 80h | 2,800 |
| 36 | 6.3 | Przeprowadzenie testów | manual | 9d | 2019-04-01 | 2019-04-11 | 35, 34 |  | Pracownik działu wsparcia IT - Barbara; Pracownik działu wsparcia IT - Krzysztof; Pracownik działu wsparcia IT - Łukasz | 216h | 7,560 |
| 37 | 6.4 | Zakończenie konfiguracji serwera | milestone, manual | 0d | 2019-04-12 | 2019-04-12 | 36 |  |  |  |  |
| 38 | 7 | **Konfiguracja sprzętu – komputery użytkowników** |  | 9d | 2019-04-10 | 2019-04-22 |  |  |  | 125.04h | 4,351.2 |
| 39 | 7.1 | Wysłanie komunikacji do użytkowników | manual | 1d | 2019-04-10 | 2019-04-10 |  |  | Pracownik administracyjny - Tomasz [50%] | 4h | 120 |
| 40 | 7.2 | Wymuszenie instalacji na komputerach pracowników | manual | 1d | 2019-04-12 | 2019-04-12 | 39, 37 |  | Pracownik działu wsparcia IT - Łukasz; Pracownik działu wsparcia IT - Barbara; Pracownik działu wsparcia IT - Krzysztof | 24h | 840 |
| 41 | 7.3 | Przeprowadzenie testów | manual | 4d | 2019-04-15 | 2019-04-18 | 40 |  | Pracownik działu wsparcia IT - Barbara; Pracownik działu wsparcia IT - Krzysztof; Pracownik działu wsparcia IT - Łukasz | 96h | 3,360 |
| 42 | 7.4 | Zakończenie konfiguracji komputerów użytkownikóa | milestone, manual | 0d | 2019-04-19 | 2019-04-19 | 41 |  |  |  |  |
| 43 | 7.5 | Zebranie ankiety zadowolenia | manual | 1d | 2019-04-22 | 2019-04-22 | 42 |  | Pracownik administracyjny - Tomasz [13%] | 1.04h | 31.2 |
| 44 | 8 | **Organizacja szkoleń dla pracowników** |  | 27d | 2019-03-20 | 2019-04-25 |  | 0d |  | 105.04h | 6,691.6 |
| 45 | 8.1 | **Przygotowanie do prowadzenia szkoleń** |  | 18d | 2019-03-20 | 2019-04-12 |  | 0d |  | 84.96h | 5,274 |
| 46 | 8.1.1 | Przygotowanie materiałów szkoleniowych | manual | 4d | 2019-03-20 | 2019-03-25 | 32 |  | Specjalista ds.. Rozwoju i szkoleń - Anna [50%]; Trener/ Specjalista ds.. Zarządzania zmianą - Zofia [50%] | 32h | 1,840 |
| 47 | 8.1.2 | Przygotowanie instrukcji dla użytkowników | manual | 9d | 2019-04-02 | 2019-04-12 | 46 |  | Pracownik administracyjny - Tomasz [11%]; Specjalista ds.. Rozwoju i szkoleń - Anna [11%]; Trener/ Specjalista ds.. Zarządzania zmianą - Zofia [50%] | 51.84h | 3,394.8 |
| 48 | 8.1.3 | Zaplanowanie dat szkoleń | manual | 1d | 2019-03-25 | 2019-03-25 |  |  | Specjalista ds.. Rozwoju i szkoleń - Anna [7%] | 0.56h | 19.6 |
| 49 | 8.1.4 | Wysłanie komunikacji do użytkowników | manual | 1d | 2019-03-27 | 2019-03-27 | 48 |  | Specjalista ds.. Rozwoju i szkoleń - Anna [7%] | 0.56h | 19.6 |
| 50 | 8.2 | Przeprowadzenie szkolenia | manual | 2d | 2019-04-17 | 2019-04-18 | 49 |  | Trener/ Specjalista ds.. Zarządzania zmianą - Zofia | 16h | 1,280 |
| 51 | 8.3 | Wysłanie instrukcji oraz pozostałych materiałów do użytkowników | manual | 1d | 2019-04-19 | 2019-04-19 | 50, 47 |  | Specjalista ds.. Rozwoju i szkoleń - Anna [25%] | 2h | 70 |
| 52 | 8.4 | Zebranie ankiet zadowolenia | manual | 1d | 2019-04-25 | 2019-04-25 | 51 |  | Pracownik administracyjny - Tomasz [13%]; Specjalista ds.. Rozwoju i szkoleń - Anna [13%] | 2.08h | 67.6 |
| 53 | 9 | Wejście systemu w życie | milestone, manual | 0d | 2019-04-30 | 2019-04-30 | 52, 43 |  |  |  |  |
| 54 | 10 | Przeprowadzenie ankiety zadowolenia z działalności systemu | manual | 1d | 2019-05-15 | 2019-05-15 | 53 |  | Pracownik administracyjny - Tomasz [13%] | 1.04h | 31.2 |
